# PPS_MKSK_CIM_NAppr_2_MKEK

Schedule from MS Project, 2013-01-21 to 2013-05-16, 4 hours a day, costs in €, A marks actual dates.

## Calendars

- Standard: Mon 10:00-12:00, 13:00-15:00; Tue off; Wed 12:00-13:00, 14:00-17:00; Thu off; Fri 12:00-13:00, 14:00-17:00; Sat-Sun 10:00-14:00.

## Resources

| Resource | Group | Rate |
| --- | --- | --- |
| Michal Kucera |  | 25 |
| Elizaveta Kantina |  | 25 |
| Alexey Malkov |  | 25 |
| Alexander Strelchenko |  | 25 |
| Ralf Rehn | Steering Committee | 25 |
| Juha Pispa | Steering Committee | 25 |

## Schedule

| ID | WBS | Task | Type | Duration | Start | Finish | Complete | Remaining | Actual start | Resources | Work | Actual work | Cost | Actual cost |
| --- | --- | --- | --- | --- | --- | --- | --- | --- | --- | --- | --- | --- | --- | --- |
| 1 | 1 | **CIM Project** |  | 82.25d | 2013-01-21 A | 2013-05-16 | 4% | 78.97d |  |  | 238.61h | 33h | 5,965.33 | 824.98 |
| 2 | 1.1 | **Starting of the Project** |  | 20h | 2013-01-21 A | 2013-01-27 | 71% | 5.84h |  |  | 26.77h | 15h | 669.33 | 374.98 |
| 3 | 1.1.1 | **Preparing the starting meeting** |  | 9h | 2013-01-21 A | 2013-01-24 | 76% | 2.12h |  |  | 16.77h | 12h | 419.33 | 299.98 |
| 4 | 1.1.1.1 | Notice of Meeting | manual | 0.5h | 2013-01-21 A | 2013-01-21 A | 100% |  |  | Elizaveta Kantina | 0.5h | 0.5h | 12.5 | 12.5 |
| 5 | 1.1.1.2 | Writing the Project Plan Document and Project Plan Schedule | manual | 8h | 2013-01-21 A | 2013-01-24 | 65% | 2.83h |  | Michal Kucera; Elizaveta Kantina [68%] | 12.77h | 8h | 319.33 | 199.98 |
| 6 | 1.1.1.3 | Making presentation | manual | 3.5h | 2013-01-23 A | 2013-01-23 A | 100% |  |  | Michal Kucera | 3.5h | 3.5h | 87.5 | 87.5 |
| 7 | 1.1.2 | Project starting meeting | manual | 1h | 2013-01-25 A | 2013-01-25 | 20% | 0.8h |  | Alexander Strelchenko; Alexey Malkov; Elizaveta Kantina; Michal Kucera; Ralf Rehn | 5h | 1h | 125 | 25 |
| 8 | 1.1.3 | Writing minutes of the meeting | manual | 1h | 2013-01-26 A | 2013-01-26 A | 100% |  |  | Elizaveta Kantina | 1h | 1h | 25 | 25 |
| 9 | 1.1.4 | Kick-Off and its preparation | manual | 1h | 2013-01-27 A | 2013-01-27 | 25% | 0.75h |  | Alexander Strelchenko; Alexey Malkov; Elizaveta Kantina; Michal Kucera | 4h | 1h | 100 | 25 |
| 10 | 1.2 | **System Requirements** |  | 40.75d | 2013-01-28 | 2013-03-25 | 2% | 39.79d | 2013-01-21 |  | 211.84h | 18h | 5,296 | 450 |
| 11 | 1.2.1 | **Analysis of the Requirement Engineering results** |  | 43h | 2013-01-28 | 2013-02-11 | 5% | 41.05h | 2013-01-21 |  | 211.84h | 18h | 5,296 | 450 |
| 12 | 1.2.1.1 | Preparation for this phase | manual | 18h | 2013-01-21 A | 2013-01-27 | 35% | 11.75h |  | Alexander Strelchenko; Alexey Malkov; Elizaveta Kantina [44%]; Michal Kucera [44%] | 51.84h | 18h | 1,296 | 450 |
| 13 | 1.2.1.2 | Studying the course material in Moodle - a lot of reading | manual | 10d | 2013-01-28 | 2013-02-10 |  |  |  | Alexander Strelchenko; Alexey Malkov; Elizaveta Kantina; Michal Kucera | 160h |  | 4,000 |  |
| 14 | 1.2.1.3 | Checking the specifications | manual | 40h | 2013-01-28 | 2013-02-10 |  |  |  |  |  |  |  |  |
| 15 | 1.2.1.4 | Clearing the goals and objectives Of the system | manual | 40h | 2013-01-28 | 2013-02-10 |  |  |  |  |  |  |  |  |
| 16 | 1.2.2 | **OOA of CIM** |  | 123h | 2013-02-11 | 2013-03-25 |  |  |  |  |  |  |  |  |
| 17 | 1.2.2.1 | Defining Use Cases | manual | 25h | 2013-02-11 | 2013-02-20 |  |  |  |  |  |  |  |  |
| 18 | 1.2.2.2 | Specifying Data to be stored | manual | 25h | 2013-02-11 | 2013-02-20 |  |  |  |  |  |  |  |  |
| 19 | 1.2.2.3 | Analyzing Use Case Implementations and their information needs | manual | 25h | 2013-02-11 | 2013-02-20 |  |  |  |  |  |  |  |  |
| 20 | 1.2.2.4 | Usability Development Process | manual | 25h | 2013-02-11 | 2013-02-20 |  |  |  |  |  |  |  |  |
| 21 | 1.2.2.5 | Finalizing OOA Documentation | manual | 25h | 2013-02-11 | 2013-02-20 |  |  |  |  |  |  |  |  |
| 22 | 1.2.2.6 | Review of OOA | manual | 1h | 2013-03-25 | 2013-03-25 |  |  |  |  |  |  |  |  |
| 23 | 1.3 | **Design and Architecture (OOD of CIM)** |  | 85h | 2013-03-25 | 2013-04-24 |  |  |  |  |  |  |  |  |
| 24 | 1.3.1 | User Interface Design | manual | 21h | 2013-03-25 | 2013-04-01 |  |  |  |  |  |  |  |  |
| 25 | 1.3.2 | Planning the testing | manual | 21h | 2013-03-25 | 2013-04-01 |  |  |  |  |  |  |  |  |
| 26 | 1.3.3 | Database Design | manual | 21h | 2013-03-25 | 2013-04-01 |  |  |  |  |  |  |  |  |
| 27 | 1.3.4 | Application Design | manual | 21h | 2013-03-25 | 2013-04-01 |  |  |  |  |  |  |  |  |
| 28 | 1.3.5 | Review | manual | 1h | 2013-04-24 | 2013-04-24 |  |  |  |  |  |  |  |  |

| ID | WBS | Task | Type | Duration | Start | Finish |
| --- | --- | --- | --- | --- | --- | --- |
| 29 | 1.4 | **Development and Coding (Prototyping Of CIM)** |  | 63h | 2013-04-24 | 2013-05-15 |
| 30 | 1.4.1 | Creating Database | manual | 14h | 2013-04-24 | 2013-04-28 |
| 31 | 1.4.2 | Implementing UI | manual | 14h | 2013-04-29 | 2013-05-04 |
| 32 | 1.4.3 | Implementing application code | manual | 14h | 2013-05-05 | 2013-05-10 |
| 33 | 1.4.4 | **Testing** |  | 13h | 2013-05-11 | 2013-05-15 |
| 34 | 1.4.4.1 | Planning the testing | manual | 6h | 2013-05-11 | 2013-05-12 |
| 35 | 1.4.4.2 | Testing activities | manual | 3h | 2013-05-11 | 2013-05-12 |
| 36 | 1.4.4.3 | Correcting iterations | manual | 8h | 2013-05-11 | 2013-05-13 |
| 37 | 2 | Delivery of the project | manual | 0.75d | 2013-05-15 | 2013-05-15 |
| 38 | 3 | Overtime tasks | manual | 100h | 2013-01-21 | 2013-02-25 |
