# PPS_MKSK_CIM_NAppr_4_MK

Schedule from MS Project, 2013-01-21 to 2013-05-15, 4 hours a day, costs in €, A marks actual dates.

## Calendars

- Standard: Mon 10:00-12:00, 13:00-15:00; Tue off; Wed 12:00-13:00, 14:00-17:00; Thu off; Fri 12:00-13:00, 14:00-17:00; Sat-Sun 10:00-14:00.

## Resources

| Resource | Group | Rate |
| --- | --- | --- |
| Michal Kucera |  | 25 |
| Elizaveta Kantina |  | 25 |
| Alexey Malkov |  | 25 |
| Alexander Strelchenko |  | 25 |
| Ralf Rehn | Steering Committee | 25 |
| Juha Pispa | Steering Committee | 25 |

## Schedule

| ID | WBS | Task | Type | Duration | Start | Finish | Complete | Remaining | Actual start | Resources | Work | Actual work | Cost | Actual cost |
| --- | --- | --- | --- | --- | --- | --- | --- | --- | --- | --- | --- | --- | --- | --- |
| 1 | 1 | **CIM Project** |  | 325h | 2013-01-21 12:00 A | 2013-05-15 16:00 | 22% | 253.72h |  |  | 722.92h | 135.5h | 18,073.08 | 3,387.51 |
| 2 | 1.1 | **Starting of the Project** |  | 20h | 2013-01-21 12:00 A | 2013-01-27 16:00 | 62% | 7.62h |  |  | 23.27h | 11.5h | 581.83 | 287.48 |
| 3 | 1.1.1 | **Preparing the starting meeting** |  | 9h | 2013-01-21 12:00 A | 2013-01-24 16:00 | 67% | 3h |  |  | 13.27h | 8.5h | 331.83 | 212.48 |
| 4 | 1.1.1.1 | Notice of Meeting | manual | 0.5h | 2013-01-21 12:00 A | 2013-01-21 12:30 A | 100% |  |  | Elizaveta Kantina | 0.5h | 0.5h | 12.5 | 12.5 |
| 5 | 1.1.1.2 | Writing the Project Plan Document and Project Plan Schedule | manual | 8h | 2013-01-21 12:00 A | 2013-01-24 16:00 | 65% | 2.83h |  | Michal Kucera; Elizaveta Kantina [68%] | 12.77h | 8h | 319.33 | 199.98 |
| 6 | 1.1.2 | Project starting meeting | manual | 1h | 2013-01-25 12:00 A | 2013-01-25 13:00 | 20% | 0.8h |  | Alexander Strelchenko; Alexey Malkov; Elizaveta Kantina; Michal Kucera; Ralf Rehn | 5h | 1h | 125 | 25 |
| 7 | 1.1.3 | Writing minutes of the meeting | manual | 1h | 2013-01-26 12:00 A | 2013-01-26 13:00 A | 100% |  |  | Elizaveta Kantina | 1h | 1h | 25 | 25 |
| 8 | 1.1.4 | Kick-Off and its preparation | manual | 1h | 2013-01-27 12:00 A | 2013-01-27 13:00 | 25% | 0.75h |  | Alexander Strelchenko; Alexey Malkov; Elizaveta Kantina; Michal Kucera | 4h | 1h | 100 | 25 |
| 9 | 1.2 | **System Requirements** |  | 40.75d | 2013-01-28 12:00 | 2013-03-25 16:00 | 24% | 30.86d | 2013-01-21 12:00 |  | 699.65h | 124h | 17,491.25 | 3,100.03 |
| 10 | 1.2.1 | **Analysis of the Requirement Engineering results** |  | 43h | 2013-01-28 12:00 | 2013-02-11 16:00 | 15% | 36.76h | 2013-01-21 12:00 |  | 406h | 43h | 10,150 | 1,075 |
| 11 | 1.2.1.1 | Studying of the System Requirements Analysis | manual | 18h | 2013-01-21 12:00 A | 2013-01-27 14:00 | 36% | 11.5h |  | Alexander Strelchenko; Alexey Malkov | 36h | 13h | 900 | 325 |
| 12 | 1.2.1.2 | Studying the course material in Moodle | manual | 10h | 2013-01-28 13:00 A | 2013-02-01 17:00 | 25% | 7.5h |  | Alexander Strelchenko; Alexey Malkov; Elizaveta Kantina; Michal Kucera | 40h | 10h | 1,000 | 250 |
| 13 | 1.2.1.3 | Checking the specifications | manual | 40h | 2013-01-28 13:00 A | 2013-02-10 16:00 | 8% | 36.67h |  | Alexey Malkov; Elizaveta Kantina; Michal Kucera | 120h | 10h | 3,000 | 250 |
| 14 | 1.2.1.4 | Clearing the goals and objectives Of the system | manual | 40h | 2013-01-28 13:00 A | 2013-02-10 16:00 | 8% | 36.67h |  | Alexey Malkov; Elizaveta Kantina; Michal Kucera | 210h | 10h | 5,250 | 250 |
| 15 | 1.2.2 | **OOA of CIM** |  | 123h | 2013-02-11 12:00 A | 2013-03-25 16:00 | 37% | 77.17h |  |  | 293.65h | 81h | 7,341.25 | 2,025.03 |
| 16 | 1.2.2.1 | **Analyzing Use Case Implementations and their information needs** |  | 89h | 2013-02-11 12:00 A | 2013-03-15 16:00 | 27% | 65.18h |  |  | 274.65h | 67h | 6,866.25 | 1,675.03 |
| 17 | 1.2.2.1.1 | Mock-up | manual | 9h | 2013-02-11 12:00 A | 2013-02-15 16:00 | 25% | 6.75h |  | Alexander Strelchenko; Alexey Malkov; Elizaveta Kantina; Michal Kucera | 36h | 9h | 900 | 225 |
| 18 | 1.2.2.1.2 | Use Case diagram | manual | 5h | 2013-02-18 12:00 A | 2013-02-20 16:00 | 25% | 3.75h |  | Alexander Strelchenko; Alexey Malkov; Elizaveta Kantina; Michal Kucera | 20h | 5h | 500 | 125 |
| 19 | 1.2.2.1.3 | Use Case Description | manual | 23h | 2013-02-22 12:00 A | 2013-03-01 16:00 | 25% | 17.25h |  | Alexander Strelchenko; Alexey Malkov; Elizaveta Kantina; Michal Kucera | 92h | 23h | 2,300 | 575 |
| 20 | 1.2.2.1.4 | Class diagram | manual | 3h | 2013-03-04 12:00 A | 2013-03-04 16:00 | 83% | 0.5h |  | Alexey Malkov | 5h | 3h | 125 | 75 |
| 21 | 1.2.2.1.5 | Class description | manual | 7h | 2013-03-13 12:00 A | 2013-03-15 16:00 | 17% | 5.82h |  | Alexander Strelchenko; Alexey Malkov; Elizaveta Kantina; Michal Kucera | 41.65h | 7h | 1,041.25 | 175.03 |
| 22 | 1.2.2.1.6 | Sequence diagram | manual | 20h | 2013-03-04 13:00 A | 2013-03-11 12:00 | 25% | 15h |  | Alexander Strelchenko; Alexey Malkov; Elizaveta Kantina; Michal Kucera | 80h | 20h | 2,000 | 500 |
| 23 | 1.2.2.2 | **Finalizing OOA Documentation** |  | 29h | 2013-03-11 12:00 | 2013-03-22 16:00 | 92% | 2.23h | 2013-03-11 13:00 |  | 15h | 13h | 375 | 325 |
| 24 | 1.2.2.2.1 | Evaluation of others teams work | manual | 3h | 2013-03-21 12:00 A | 2013-03-21 16:00 | 67% | 1h |  | Michal Kucera | 5h | 3h | 125 | 75 |
| 25 | 1.2.2.2.2 | Creation of explanatory paragraphs in the document | manual | 5h | 2013-03-11 13:00 A | 2013-03-13 16:00 A | 100% |  |  | Michal Kucera | 5h | 5h | 125 | 125 |
| 26 | 1.2.2.2.3 | Notice of meetings | manual | 1h | 2013-03-15 12:00 A | 2013-03-15 13:00 A | 100% |  |  | Elizaveta Kantina | 1h | 1h | 25 | 25 |
| 27 | 1.2.2.2.4 | Writing the Project Status report | manual | 2h | 2013-03-22 12:00 A | 2013-03-22 15:00 A | 100% |  |  | Michal Kucera | 2h | 2h | 50 | 50 |
| 28 | 1.2.2.2.5 | Review of documentation consistency with Mock-up and Usecases | manual | 2h | 2013-03-13 12:00 A | 2013-03-13 15:00 A | 100% |  |  | Michal Kucera | 2h | 2h | 50 | 50 |
| 29 | 1.2.2.3 | Review of OOA | manual | 1h | 2013-03-25 12:00 A | 2013-03-25 14:00 | 25% | 0.75h |  | Alexander Strelchenko; Alexey Malkov; Elizaveta Kantina; Michal Kucera | 4h | 1h | 100 | 25 |

Notes:
- 18: The amount of hours is calculated per team. If there is need to calculate the hours for the project, then it needs to be multiplied by 4.

| ID | WBS | Task | Type | Duration | Start | Finish | Resources | Work | Cost |
| --- | --- | --- | --- | --- | --- | --- | --- | --- | --- |
| 30 | 1.3 | **Design and Architecture (OOD of CIM)** |  | 69h | 2013-03-25 12:00 | 2013-04-18 16:00 |  |  |  |
| 31 | 1.3.1 | User Interface Design | manual | 4h? | 2013-03-25 12:00 | 2013-03-27 15:00 |  |  |  |
| 32 | 1.3.2 | Planning the testing | manual | 4h? | 2013-03-25 12:00 | 2013-03-27 15:00 |  |  |  |
| 33 | 1.3.3 | Database Design | manual | 4h? | 2013-03-25 12:00 | 2013-03-27 15:00 |  |  |  |
| 34 | 1.3.4 | Application Design | manual | 4h? | 2013-03-25 12:00 | 2013-03-27 15:00 |  |  |  |
| 35 | 1.3.5 | Review | manual | 1h | 2013-04-17 16:00 | 2013-04-17 17:00 |  |  |  |
| 36 | 1.4 | **Development and Coding (Prototyping Of CIM)** |  | 60h | 2013-04-24 12:00 | 2013-05-13 15:00 |  |  |  |
| 37 | 1.4.1 | Creating Database | manual | 4h? | 2013-04-24 12:00 | 2013-04-24 17:00 |  |  |  |
| 38 | 1.4.2 | Implementing UI | manual | 4h? | 2013-04-24 12:00 | 2013-04-24 17:00 |  |  |  |
| 39 | 1.4.3 | Implementing application code | manual | 4h? | 2013-04-24 12:00 | 2013-04-24 17:00 |  |  |  |
| 40 | 1.5 | **Testing** |  | 13h | 2013-05-11 12:00 | 2013-05-15 16:00 |  |  |  |
| 41 | 1.5.1 | Planning the testing | manual | 4h? | 2013-05-11 12:00 | 2013-05-12 12:00 |  |  |  |
| 42 | 1.5.2 | Testing activities | manual | 4h? | 2013-05-11 12:00 | 2013-05-12 12:00 |  |  |  |
| 43 | 1.5.3 | Correcting iterations | manual | 4h? | 2013-05-11 12:00 | 2013-05-12 12:00 |  |  |  |
| 44 | 2 | Delivery of the project | manual | 0.75d | 2013-05-15 12:00 | 2013-05-15 16:00 |  |  |  |
| 45 | 3 | **Overtime tasks** |  | 100h | 2013-01-21 12:00 | 2013-02-25 12:00 |  | 3.5h | 87.5 |
| 46 | 3.1 | Checking the Project Plan Schedule | manual | 0.5h | 2013-02-04 13:00 | 2013-02-04 13:30 | Michal Kucera | 0.5h | 12.5 |
| 47 | 3.2 | Creation of the WorkTracking document | manual | 1h | 2013-02-04 13:00 | 2013-02-04 14:00 | Michal Kucera | 1h | 25 |
| 48 | 3.3 | Merging of the individual parts of Software requirements | manual | 2h | 2013-03-16 12:00 | 2013-03-16 14:00 | Alexander Strelchenko | 2h | 50 |
